Schedule from MS Project, 2023-05-18 to 2023-06-16, costs in ¥.
Microsoft

## Calendars

- 标准: Mon-Sun 08:00-12:00, 13:00-17:00.

## Resources

| Resource | Rate |
| --- | --- |
| 设计师 | 50 |
| 程序员 | 60 |
| 分析员 | 45 |
| 架构师 | 80 |
| 测试员 | 50 |

## Schedule

| ID | WBS | Task | Type | Duration | Start | Finish | Predecessors | Total slack | Resources | Work | Cost |
| --- | --- | --- | --- | --- | --- | --- | --- | --- | --- | --- | --- |
| 1 | 1 | **需求分析** |  | 3.5d | 2023-05-18 09:00 | 2023-05-21 14:00 |  | 0d |  | 40h | 2,040 |
| 2 | 1.1 | 编写需求规格文档 | manual | 2d | 2023-05-18 09:00 | 2023-05-20 09:00 |  |  | 分析员 | 16h | 720 |
| 3 | 1.2 | 需求评审 | manual | 0.5d | 2023-05-20 09:00 | 2023-05-20 14:00 | 2 |  | 测试员; 程序员; 分析员; 架构师; 设计师 | 20h | 1,140 |
| 4 | 1.3 | 更新需求文档 | manual | 0.5d | 2023-05-21 09:00 | 2023-05-21 14:00 | 3 |  | 分析员 | 4h | 180 |
| 5 | 2 | **总体设计** |  | 4.5d | 2023-05-21 14:00 | 2023-05-26 09:00 | 1 | 0d |  | 112h | 6,840 |
| 6 | 2.1 | 总体架构设计 | manual | 2d | 2023-05-22 09:00 | 2023-05-24 09:00 |  |  | 架构师 | 16h | 1,280 |
| 7 | 2.2 | 数据结构设计 | manual | 2d | 2023-05-21 14:00 | 2023-05-23 14:00 |  |  | 程序员 | 16h | 960 |
| 8 | 2.3 | 界面UI设计 | manual | 2d | 2023-05-22 09:00 | 2023-05-24 09:00 |  |  | 设计师 | 16h | 800 |
| 9 | 2.4 | 设计评审 | manual | 1d | 2023-05-24 09:00 | 2023-05-25 09:00 | 6, 7, 8 |  | 测试员; 程序员; 分析员; 架构师; 设计师 | 40h | 2,280 |
| 10 | 2.5 | 更新设计 | manual | 1d | 2023-05-25 09:00 | 2023-05-26 09:00 | 9 |  | 程序员; 架构师; 设计师 | 24h | 1,520 |
| 11 | 3 | **功能详细设计** |  | 8d | 2023-05-26 09:00 | 2023-06-03 09:00 | 5 | 0d |  | 237.92h | 14,275.2 |
| 12 | 3.1 | **系统功能设计** |  | 1.5d | 2023-05-26 09:00 | 2023-05-27 14:00 |  | 0d |  | 16h | 1,200 |
| 13 | 3.1.1 | 登录系统 | manual | 0.5d | 2023-05-26 09:00 | 2023-05-26 14:00 |  |  | 程序员 | 4h | 240 |
| 14 | 3.1.2 | 系统数据库 | manual | 1.5d | 2023-05-26 09:00 | 2023-05-27 14:00 |  |  | 架构师 | 12h | 960 |
| 15 | 3.2 | **企业用户功能设计** |  | 2d | 2023-05-26 09:00 | 2023-05-28 09:00 |  | 0d |  | 40h | 2,400 |
| 16 | 3.2.1 | 录入企业详细信息 | manual | 1d | 2023-05-26 09:00 | 2023-05-27 09:00 |  |  | 程序员 | 8h | 480 |
| 17 | 3.2.2 | 上报企业详细信息到省 | manual | 1d | 2023-05-26 09:00 | 2023-05-27 09:00 |  |  | 程序员 | 8h | 480 |
| 18 | 3.2.3 | 就业失业数据填报 | manual | 1d | 2023-05-26 09:00 | 2023-05-27 09:00 |  |  | 程序员 | 8h | 480 |
| 19 | 3.2.4 | 就业失业数据查询 | manual | 1d | 2023-05-27 09:00 | 2023-05-28 09:00 |  |  | 程序员 | 8h | 480 |
| 20 | 3.2.5 | 浏览通知 | manual | 1d | 2023-05-27 09:00 | 2023-05-28 09:00 |  |  | 程序员 | 8h | 480 |
| 21 | 3.3 | **省用户功能设计** |  | 2.5d | 2023-05-27 09:00 | 2023-05-29 14:00 |  | 0d |  | 39.92h | 2,395.2 |
| 22 | 3.3.1 | **企业备案** |  | 1.25d | 2023-05-27 09:00 | 2023-05-28 11:00 |  |  |  | 8h | 480 |
| 23 | 3.3.1.1 | 查看所有已备案的企业 | manual | 0.25d | 2023-05-27 09:00 | 2023-05-27 11:00 |  |  | 程序员 | 2h | 120 |
| 24 | 3.3.1.2 | 根据调查期和地区检索企业 | manual | 0.25d | 2023-05-27 09:00 | 2023-05-27 11:00 |  |  | 程序员 | 2h | 120 |
| 25 | 3.3.1.3 | 查看企业的详细信息 | manual | 0.25d | 2023-05-27 09:00 | 2023-05-27 11:00 |  |  | 程序员 | 2h | 120 |
| 26 | 3.3.1.4 | 将列表导出为EXCEL | manual | 0.25d | 2023-05-28 09:00 | 2023-05-28 11:00 |  |  | 程序员 | 2h | 120 |

| ID | WBS | Task | Type | Duration | Start | Finish | Resources | Work | Cost |
| --- | --- | --- | --- | --- | --- | --- | --- | --- | --- |
| 27 | 3.3.2 | **报表管理** |  | 1d | 2023-05-28 09:00 | 2023-05-29 09:00 |  | 8h | 480 |
| 28 | 3.3.2.1 | 查看企业上报的数据和报表 | manual | 0.25d | 2023-05-28 09:00 | 2023-05-28 11:00 | 程序员 | 2h | 120 |
| 29 | 3.3.2.2 | 审核通过 | manual | 0.25d | 2023-05-28 09:00 | 2023-05-28 11:00 | 程序员 | 2h | 120 |
| 30 | 3.3.2.3 | 退回修改 | manual | 0.25d | 2023-05-28 09:00 | 2023-05-28 11:00 | 程序员 | 2h | 120 |
| 31 | 3.3.2.4 | 上报到部级单位 | manual | 0.25d | 2023-05-28 09:00 | 2023-05-28 11:00 | 程序员 | 2h | 120 |
| 32 | 3.3.3 | **数据管理** |  | 1d | 2023-05-28 09:00 | 2023-05-28 18:00 |  | 7.92h | 475.2 |
| 33 | 3.3.3.1 | 汇总企业数据 | manual | 0.33d | 2023-05-28 09:00 | 2023-05-28 11:38 | 程序员 | 2.64h | 158.4 |
| 34 | 3.3.3.2 | 修改企业数据 | manual | 0.33d | 2023-05-28 09:00 | 2023-05-28 11:38 | 程序员 | 2.64h | 158.4 |
| 35 | 3.3.3.3 | 删除历史数据 | manual | 0.33d | 2023-05-28 09:00 | 2023-05-28 11:38 | 程序员 | 2.64h | 158.4 |
| 36 | 3.3.4 | **取样分析** |  | 1d | 2023-05-28 09:00 | 2023-05-29 09:00 |  | 8h | 480 |
| 37 | 3.3.4.1 | 显示各市企业数量占比饼图 | manual | 0.5d | 2023-05-28 09:00 | 2023-05-28 14:00 | 程序员 | 4h | 240 |
| 38 | 3.3.4.2 | 根据地区查询条件进行检索 | manual | 0.5d | 2023-05-28 09:00 | 2023-05-28 14:00 | 程序员 | 4h | 240 |
| 39 | 3.3.5 | **图表分析** |  | 1.5d | 2023-05-28 09:00 | 2023-05-29 14:00 |  | 8h | 480 |
| 40 | 3.3.5.1 | 对比分析 | manual | 0.5d | 2023-05-28 09:00 | 2023-05-28 14:00 | 程序员 | 4h | 240 |
| 41 | 3.3.5.2 | 趋势分析 | manual | 0.5d | 2023-05-29 09:00 | 2023-05-29 14:00 | 程序员 | 4h | 240 |
| 42 | 3.4 | **数据查询与导出** |  | 1d | 2023-05-29 09:00 | 2023-05-30 09:00 |  | 12h | 720 |
| 43 | 3.4.1 | 按条件查询 | manual | 0.5d | 2023-05-29 09:00 | 2023-05-29 14:00 | 程序员 | 4h | 240 |
| 44 | 3.4.2 | 清除查询条件 | manual | 0.5d | 2023-05-29 09:00 | 2023-05-29 14:00 | 程序员 | 4h | 240 |
| 45 | 3.4.3 | 导出查询后的数据 | manual | 0.5d | 2023-05-29 09:00 | 2023-05-29 14:00 | 程序员 | 4h | 240 |
| 46 | 3.5 | **发布通知** |  | 1d | 2023-05-30 09:00 | 2023-05-31 09:00 |  | 8h | 480 |
| 47 | 3.5.1 | 列出用户发布的所有通知 | manual | 0.25d | 2023-05-30 09:00 | 2023-05-30 11:00 | 程序员 | 2h | 120 |
| 48 | 3.5.2 | 新增一条通知 | manual | 0.25d | 2023-05-30 09:00 | 2023-05-30 11:00 | 程序员 | 2h | 120 |
| 49 | 3.5.3 | 修改一条通知 | manual | 0.25d | 2023-05-30 09:00 | 2023-05-30 11:00 | 程序员 | 2h | 120 |
| 50 | 3.5.4 | 删除一条通知 | manual | 0.25d | 2023-05-30 09:00 | 2023-05-30 11:00 | 程序员 | 2h | 120 |

| ID | WBS | Task | Type | Duration | Start | Finish | Predecessors | Total slack | Resources | Work | Cost |
| --- | --- | --- | --- | --- | --- | --- | --- | --- | --- | --- | --- |
| 51 | 3.6 | **浏览通知** |  | 1d | 2023-05-30 09:00 | 2023-05-31 09:00 |  |  |  | 8h | 480 |
| 52 | 3.6.1 | 列出通知信息 | manual | 0.5d | 2023-05-30 09:00 | 2023-05-30 14:00 |  |  | 程序员 | 4h | 240 |
| 53 | 3.6.2 | 查看通知信息 | manual | 0.5d | 2023-05-30 09:00 | 2023-05-30 14:00 |  |  | 程序员 | 4h | 240 |
| 54 | 3.7 | **系统管理** |  | 3d | 2023-05-30 09:00 | 2023-06-02 09:00 |  |  |  | 26h | 1,560 |
| 55 | 3.7.1 | 新增调查期 | manual | 0.25d | 2023-05-30 09:00 | 2023-05-30 11:00 |  |  | 程序员 | 2h | 120 |
| 56 | 3.7.2 | 修改调查期 | manual | 0.25d | 2023-05-30 09:00 | 2023-05-30 11:00 |  |  | 程序员 | 2h | 120 |
| 57 | 3.7.3 | 建立省用户 | manual | 0.25d | 2023-05-30 09:00 | 2023-05-30 11:00 |  |  | 程序员 | 2h | 120 |
| 58 | 3.7.4 | 建立企业用户 | manual | 0.25d | 2023-05-30 09:00 | 2023-05-30 11:00 |  |  | 程序员 | 2h | 120 |
| 59 | 3.7.5 | 列出用户信息 | manual | 0.25d | 2023-05-30 09:00 | 2023-05-30 11:00 |  |  | 程序员 | 2h | 120 |
| 60 | 3.7.6 | 新增用户信息 | manual | 0.25d | 2023-05-30 09:00 | 2023-05-30 11:00 |  |  | 程序员 | 2h | 120 |
| 61 | 3.7.7 | 删除用户信息 | manual | 0.25d | 2023-05-30 09:00 | 2023-05-30 11:00 |  |  | 程序员 | 2h | 120 |
| 62 | 3.7.8 | 修改用户信息 | manual | 0.25d | 2023-05-30 09:00 | 2023-05-30 11:00 |  |  | 程序员 | 2h | 120 |
| 63 | 3.7.9 | 定义角色 | manual | 0.25d | 2023-05-31 09:00 | 2023-05-31 11:00 |  |  | 程序员 | 2h | 120 |
| 64 | 3.7.10 | 设置角色权限 | manual | 0.25d | 2023-05-31 09:00 | 2023-05-31 11:00 |  |  | 程序员 | 2h | 120 |
| 65 | 3.7.11 | 删除角色 | manual | 0.25d | 2023-05-31 09:00 | 2023-05-31 11:00 |  |  | 程序员 | 2h | 120 |
| 66 | 3.7.12 | 查看系统使用情况 | manual | 0.25d | 2023-05-31 09:00 | 2023-05-31 11:00 |  |  | 程序员 | 2h | 120 |
| 67 | 3.7.13 | 数据接口 | manual | 0.25d | 2023-05-31 09:00 | 2023-05-31 11:00 |  |  | 程序员 | 2h | 120 |
| 68 | 3.8 | 设计评审 | manual | 2d | 2023-05-31 09:00 | 2023-06-02 09:00 | 12, 15, 21 |  | 测试员; 程序员; 分析员; 架构师; 设计师 | 80h | 4,560 |
| 69 | 3.9 | 更新设计 | manual | 1d | 2023-06-02 09:00 | 2023-06-03 09:00 | 68 |  | 程序员 | 8h | 480 |
| 70 | 4 | **系统实现** |  | 4.88d | 2023-06-03 09:00 | 2023-06-07 18:00 | 11 | 0d |  | 145.84h | 8,990.4 |
| 71 | 4.1 | **系统功能实现** |  | 1.5d | 2023-06-03 09:00 | 2023-06-04 14:00 |  | 0d |  | 16h | 1,200 |
| 72 | 4.1.1 | 登录系统 | manual | 0.5d | 2023-06-03 09:00 | 2023-06-03 14:00 | 13 |  | 程序员 | 4h | 240 |
| 73 | 4.1.2 | 系统数据库 | manual | 1.5d | 2023-06-03 09:00 | 2023-06-04 14:00 | 14 |  | 架构师 | 12h | 960 |
| 74 | 4.2 | **企业用户功能实现** |  | 2d | 2023-06-03 09:00 | 2023-06-05 09:00 |  | 0d |  | 40h | 2,400 |
| 75 | 4.2.1 | 设置企业基础信息 | manual | 1d | 2023-06-03 09:00 | 2023-06-04 09:00 | 16 |  | 程序员 | 8h | 480 |
| 76 | 4.2.2 | 备案上报企业信息 | manual | 1d | 2023-06-03 09:00 | 2023-06-04 09:00 | 17 |  | 程序员 | 8h | 480 |
| 77 | 4.2.3 | 就业失业数据填报 | manual | 1d | 2023-06-03 09:00 | 2023-06-04 09:00 | 18 |  | 程序员 | 8h | 480 |
| 78 | 4.2.4 | 就业失业数据查询 | manual | 1d | 2023-06-04 09:00 | 2023-06-05 09:00 | 19 |  | 程序员 | 8h | 480 |
| 79 | 4.2.5 | 浏览通知 | manual | 1d | 2023-06-04 09:00 | 2023-06-05 09:00 | 20 |  | 程序员 | 8h | 480 |

| ID | WBS | Task | Type | Duration | Start | Finish | Predecessors | Total slack | Resources | Work | Cost |
| --- | --- | --- | --- | --- | --- | --- | --- | --- | --- | --- | --- |
| 80 | 4.3 | **省用户功能实现** |  | 3.88d | 2023-06-04 09:00 | 2023-06-07 18:00 |  | 0d |  | 89.84h | 5,390.4 |
| 81 | 4.3.1 | **企业备案** |  | 1d | 2023-06-04 09:00 | 2023-06-05 09:00 |  |  |  | 8h | 480 |
| 82 | 4.3.1.1 | 查看所有已备案的企业 | manual | 0.25d | 2023-06-04 09:00 | 2023-06-04 11:00 | 23 |  | 程序员 | 2h | 120 |
| 83 | 4.3.1.2 | 根据调查期和地区检索企业 | manual | 0.25d | 2023-06-04 09:00 | 2023-06-04 11:00 | 24 |  | 程序员 | 2h | 120 |
| 84 | 4.3.1.3 | 查看企业的详细信息 | manual | 0.25d | 2023-06-04 09:00 | 2023-06-04 11:00 | 25 |  | 程序员 | 2h | 120 |
| 85 | 4.3.1.4 | 将列表导出为EXCEL | manual | 0.25d | 2023-06-04 09:00 | 2023-06-04 11:00 | 26 |  | 程序员 | 2h | 120 |
| 86 | 4.3.2 | **报表管理** |  | 1.25d | 2023-06-04 09:00 | 2023-06-05 11:00 |  |  |  | 8h | 480 |
| 87 | 4.3.2.1 | 查看企业上报的数据和报表 | manual | 0.25d | 2023-06-04 09:00 | 2023-06-04 11:00 | 28 |  | 程序员 | 2h | 120 |
| 88 | 4.3.2.2 | 审核通过 | manual | 0.25d | 2023-06-04 09:00 | 2023-06-04 11:00 | 29 |  | 程序员 | 2h | 120 |
| 89 | 4.3.2.3 | 退回修改 | manual | 0.25d | 2023-06-04 09:00 | 2023-06-04 11:00 | 30 |  | 程序员 | 2h | 120 |
| 90 | 4.3.2.4 | 上报到部级单位 | manual | 0.25d | 2023-06-05 09:00 | 2023-06-05 11:00 | 31 |  | 程序员 | 2h | 120 |
| 91 | 4.3.3 | **数据管理** |  | 1d | 2023-06-05 09:00 | 2023-06-06 09:00 |  |  |  | 7.92h | 475.2 |
| 92 | 4.3.3.1 | 汇总企业数据 | manual | 0.33d | 2023-06-05 09:00 | 2023-06-05 11:38 | 33 |  | 程序员 | 2.64h | 158.4 |
| 93 | 4.3.3.2 | 修改企业数据 | manual | 0.33d | 2023-06-05 09:00 | 2023-06-05 11:38 | 34 |  | 程序员 | 2.64h | 158.4 |
| 94 | 4.3.3.3 | 删除历史数据 | manual | 0.33d | 2023-06-05 09:00 | 2023-06-05 11:38 | 35 |  | 程序员 | 2.64h | 158.4 |
| 95 | 4.3.4 | **取样分析** |  | 1d | 2023-06-05 09:00 | 2023-06-06 09:00 |  |  |  | 8h | 480 |
| 96 | 4.3.4.1 | 显示各市企业数量占比饼图 | manual | 0.5d | 2023-06-05 09:00 | 2023-06-05 14:00 | 37 |  | 程序员 | 4h | 240 |
| 97 | 4.3.4.2 | 根据地区查询条件进行检索 | manual | 0.5d | 2023-06-05 09:00 | 2023-06-05 14:00 | 38 |  | 程序员 | 4h | 240 |
| 98 | 4.3.5 | **图表分析** |  | 1d | 2023-06-05 09:00 | 2023-06-06 09:00 |  |  |  | 8h | 480 |
| 99 | 4.3.5.1 | 对比分析 | manual | 0.5d | 2023-06-05 09:00 | 2023-06-05 14:00 | 40 |  | 程序员 | 4h | 240 |
| 100 | 4.3.5.2 | 趋势分析 | manual | 0.5d | 2023-06-05 09:00 | 2023-06-05 14:00 | 41 |  | 程序员 | 4h | 240 |
| 101 | 4.3.6 | **数据查询与导出** |  | 1.5d | 2023-06-05 09:00 | 2023-06-06 14:00 |  |  |  | 7.92h | 475.2 |
| 102 | 4.3.6.1 | 按条件查询 | manual | 0.33d | 2023-06-05 09:00 | 2023-06-05 11:38 | 43 |  | 程序员 | 2.64h | 158.4 |
| 103 | 4.3.6.2 | 清除查询条件 | manual | 0.33d | 2023-06-06 09:00 | 2023-06-06 11:38 | 44 |  | 程序员 | 2.64h | 158.4 |
| 104 | 4.3.6.3 | 导出查询后的数据 | manual | 0.33d | 2023-06-06 09:00 | 2023-06-06 11:38 | 45 |  | 程序员 | 2.64h | 158.4 |

| ID | WBS | Task | Type | Duration | Start | Finish | Predecessors | Total slack | Resources | Work | Cost |
| --- | --- | --- | --- | --- | --- | --- | --- | --- | --- | --- | --- |
| 105 | 4.3.7 | **发布通知** |  | 1d | 2023-06-06 09:00 | 2023-06-07 09:00 |  |  |  | 8h | 480 |
| 106 | 4.3.7.1 | 列出用户发布的所有通知 | manual | 0.25d | 2023-06-06 09:00 | 2023-06-06 11:00 | 47 |  | 程序员 | 2h | 120 |
| 107 | 4.3.7.2 | 新增一条通知 | manual | 0.25d | 2023-06-06 09:00 | 2023-06-06 11:00 | 48 |  | 程序员 | 2h | 120 |
| 108 | 4.3.7.3 | 修改一条通知 | manual | 0.25d | 2023-06-06 09:00 | 2023-06-06 11:00 | 49 |  | 程序员 | 2h | 120 |
| 109 | 4.3.7.4 | 删除一条通知 | manual | 0.25d | 2023-06-06 09:00 | 2023-06-06 11:00 | 50 |  | 程序员 | 2h | 120 |
| 110 | 4.3.8 | **浏览通知** |  | 1d | 2023-06-06 09:00 | 2023-06-07 09:00 |  |  |  | 8h | 480 |
| 111 | 4.3.8.1 | 列出通知信息 | manual | 0.5d | 2023-06-06 09:00 | 2023-06-06 14:00 | 52 |  | 程序员 | 4h | 240 |
| 112 | 4.3.8.2 | 查看通知信息 | manual | 0.5d | 2023-06-06 09:00 | 2023-06-06 14:00 | 53 |  | 程序员 | 4h | 240 |
| 113 | 4.3.9 | **系统管理** |  | 2d | 2023-06-06 09:00 | 2023-06-07 18:00 |  |  |  | 26h | 1,560 |
| 114 | 4.3.9.1 | 新增调查期 | manual | 0.25d | 2023-06-06 09:00 | 2023-06-06 11:00 | 55 |  | 程序员 | 2h | 120 |
| 115 | 4.3.9.2 | 修改调查期 | manual | 0.25d | 2023-06-06 09:00 | 2023-06-06 11:00 | 56 |  | 程序员 | 2h | 120 |
| 116 | 4.3.9.3 | 建立省用户 | manual | 0.25d | 2023-06-06 09:00 | 2023-06-06 11:00 | 57 |  | 程序员 | 2h | 120 |
| 117 | 4.3.9.4 | 建立企业用户 | manual | 0.25d | 2023-06-06 09:00 | 2023-06-06 11:00 | 58 |  | 程序员 | 2h | 120 |
| 118 | 4.3.9.5 | 列出用户信息 | manual | 0.25d | 2023-06-06 09:00 | 2023-06-06 11:00 | 59 |  | 程序员 | 2h | 120 |
| 119 | 4.3.9.6 | 新增用户信息 | manual | 0.25d | 2023-06-07 09:00 | 2023-06-07 11:00 | 60 |  | 程序员 | 2h | 120 |
| 120 | 4.3.9.7 | 删除用户信息 | manual | 0.25d | 2023-06-07 09:00 | 2023-06-07 11:00 | 61 |  | 程序员 | 2h | 120 |
| 121 | 4.3.9.8 | 修改用户信息 | manual | 0.25d | 2023-06-07 09:00 | 2023-06-07 11:00 | 62 |  | 程序员 | 2h | 120 |
| 122 | 4.3.9.9 | 定义角色 | manual | 0.25d | 2023-06-07 09:00 | 2023-06-07 11:00 | 63 |  | 程序员 | 2h | 120 |
| 123 | 4.3.9.10 | 设置角色权限 | manual | 0.25d | 2023-06-07 09:00 | 2023-06-07 11:00 | 64 |  | 程序员 | 2h | 120 |
| 124 | 4.3.9.11 | 删除角色 | manual | 0.25d | 2023-06-07 09:00 | 2023-06-07 11:00 | 65 |  | 程序员 | 2h | 120 |
| 125 | 4.3.9.12 | 查看系统使用情况 | manual | 0.25d | 2023-06-07 09:00 | 2023-06-07 11:00 | 66 |  | 程序员 | 2h | 120 |
| 126 | 4.3.9.13 | 数据接口 | manual | 0.25d | 2023-06-07 09:00 | 2023-06-07 11:00 | 67 |  | 程序员 | 2h | 120 |
| 127 | 5 | **需求变更** |  | 3.88d | 2023-06-08 09:00 | 2023-06-11 18:00 |  | 0d |  | 104h | 6,240 |
| 128 | 5.1 | **省用户新增功能的设计与实现** |  | 1.5d | 2023-06-08 09:00 | 2023-06-09 14:00 |  |  |  | 32h | 1,920 |
| 129 | 5.1.1 | 创建市用户 | manual | 1d | 2023-06-08 09:00 | 2023-06-09 09:00 |  |  | 程序员 | 8h | 480 |
| 130 | 5.1.2 | 修改市用户信息 | manual | 1d | 2023-06-08 09:00 | 2023-06-09 09:00 |  |  | 程序员 | 8h | 480 |
| 131 | 5.1.3 | 查询市用户信息 | manual | 1d | 2023-06-08 09:00 | 2023-06-09 09:00 |  |  | 程序员 | 8h | 480 |
| 132 | 5.1.4 | 删除市用户 | manual | 1d | 2023-06-08 09:00 | 2023-06-09 09:00 |  |  | 程序员 | 8h | 480 |

| ID | WBS | Task | Type | Duration | Start | Finish | Predecessors | Total slack | Resources | Work | Cost |
| --- | --- | --- | --- | --- | --- | --- | --- | --- | --- | --- | --- |
| 133 | 5.2 | **市用户的设计与实现** |  | 3d | 2023-06-09 09:00 | 2023-06-11 18:00 |  |  |  | 48h | 2,880 |
| 134 | 5.2.1 | 创建区（县）用户 | manual | 1d | 2023-06-09 09:00 | 2023-06-10 09:00 |  |  | 程序员 | 8h | 480 |
| 135 | 5.2.2 | 修改区（县）用户信息 | manual | 1d | 2023-06-09 09:00 | 2023-06-10 09:00 |  |  | 程序员 | 8h | 480 |
| 136 | 5.2.3 | 查询区（县）用户信息 | manual | 1d | 2023-06-09 09:00 | 2023-06-10 09:00 |  |  | 程序员 | 8h | 480 |
| 137 | 5.2.4 | 删除区（县）用户 | manual | 1d | 2023-06-09 09:00 | 2023-06-10 09:00 |  |  | 程序员 | 8h | 480 |
| 138 | 5.2.5 | 汇总区（县）用户上报的数据 | manual | 1d | 2023-06-10 09:00 | 2023-06-11 09:00 |  |  | 程序员 | 8h | 480 |
| 139 | 5.2.6 | 上报数据到省 | manual | 1d | 2023-06-10 09:00 | 2023-06-11 09:00 |  |  | 程序员 | 8h | 480 |
| 140 | 5.3 | **区（县）用户的设计与实现** |  | 2d | 2023-06-10 09:00 | 2023-06-11 18:00 |  |  |  | 24h | 1,440 |
| 141 | 5.3.1 | 收集汇总企业用户数据 | manual | 1.5d | 2023-06-10 09:00 | 2023-06-11 14:00 |  |  | 程序员 | 12h | 720 |
| 142 | 5.3.2 | 上报数据到市 | manual | 1.5d | 2023-06-10 09:00 | 2023-06-11 14:00 |  |  | 程序员 | 12h | 720 |
| 143 | 6 | **系统测试** |  | 3d | 2023-06-11 09:00 | 2023-06-14 09:00 | 70 | 0d |  | 48h | 2,560 |
| 144 | 6.1 | 功能测试 | manual | 1d | 2023-06-11 09:00 | 2023-06-12 09:00 |  |  | 测试员 | 8h | 400 |
| 145 | 6.2 | 性能测试 | manual | 1d | 2023-06-11 09:00 | 2023-06-12 09:00 |  |  | 测试员 | 8h | 400 |
| 146 | 6.3 | BUG修复 | manual | 2d | 2023-06-12 09:00 | 2023-06-14 09:00 | 144, 145 |  | 测试员; 程序员 | 32h | 1,760 |
| 147 | 7 | **文档编写** |  | 3d | 2023-06-14 09:00 | 2023-06-16 18:00 | 143 |  |  | 32h | 1,760 |
| 148 | 7.1 | 编写产品说明书 | manual | 1d | 2023-06-14 09:00 | 2023-06-15 09:00 |  |  | 设计师; 程序员 | 16h | 880 |
| 149 | 7.2 | 编写用户手册 | manual | 1d | 2023-06-15 09:00 | 2023-06-16 09:00 |  |  | 设计师; 程序员 | 16h | 880 |
